# Gantt

Schedule from MS Project, 2022-06-03 to 2022-12-23, 9 hours a day, A marks actual dates.

## Calendars

- business - imported: Mon-Fri 08:00-17:00; Sat-Sun off.

## Schedule

| ID | WBS | Task | Type | Duration | Start | Finish | Predecessors | Complete | Remaining | Total slack | Free slack | Constraint | Work |
| --- | --- | --- | --- | --- | --- | --- | --- | --- | --- | --- | --- | --- | --- |
| 1 | 1 | **Blue Triton Phase 2** |  | 145.22d | 2022-06-03 A | 2022-12-23 |  | 3% | 141.32d | 0d |  | start no earlier than 2022-06-01 |  |
| 2 | 1.1 | Workshops | milestone | 0d | 2022-06-27 A | 2022-06-27 A |  | 100% |  |  |  | start no earlier than | 27h |
| 3 | 1.2 | **Uppwise setup** |  | 111.33d | 2022-06-03 A | 2022-11-07 |  | 13% | 96.8d | 33.89d |  | start no earlier than 2022-06-03 |  |
| 4 | 1.2.1 | **Uppwise - Phase #1** |  | 27.89d | 2022-06-03 A | 2022-07-12 |  | 35% | 18.18d | 50.11d |  | start no earlier than 2022-06-03 |  |
| 5 | 1.2.1.1 | Setup Uppwise SaaS instance | milestone | 0d | 2022-06-03 A | 2022-06-03 A |  | 100% |  |  |  | start no earlier than | 45h |
| 6 | 1.2.1.2 | Start duplicating existing project processes |  | 4.44d | 2022-06-10 A | 2022-06-16 | 5 | 84% | 0.69d | 0.56d |  | start no earlier than 2022-06-10 | 45h |
| 7 | 1.2.1.3 | Recreate collaboration processes |  | 4.44d | 2022-06-17 A | 2022-06-23 | 6 | 56% | 1.94d | 0.81d | 0.56d | start no earlier than 2022-06-17 | 45h |
| 8 | 1.2.1.4 | Configuration of Portfolio and Program |  | 0.89d | 2022-06-24 A | 2022-06-24 | 7 | 28% | 0.64d | 3.11d |  | start no earlier than 2022-06-24 | 9h |
| 9 | 1.2.1.5 | Configuration additional processes |  | 8.89d | 2022-06-30 A | 2022-07-12 | 2, 8 |  | 8.89d | 50.11d |  | start no earlier than 2022-06-30 | 90h |
| 10 | 1.2.2 | **Uppwise-Phase #2** |  | 33.33d | 2022-09-21 A | 2022-11-07 |  |  | 33.33d | 33.89d |  | start no earlier than 2022-09-21 |  |
| 11 | 1.2.2.1 | Strategy Management |  | 4.44d | 2022-09-21 A | 2022-09-27 | 20, 9 |  | 4.44d | 0.56d |  | start no earlier than 2022-09-21 | 45h |
| 12 | 1.2.2.2 | Resource Management |  | 13.33d | 2022-09-28 A | 2022-10-17 | 11 |  | 13.33d | 1.67d |  | start no earlier than 2022-09-28 | 135h |
| 13 | 1.2.2.3 | Dashboards & Reporting |  | 13.33d | 2022-10-19 A | 2022-11-07 | 12 |  | 13.33d | 33.89d |  | start no earlier than 2022-10-19 | 135h |
| 14 | 1.3 | **CPMT-Uppwise merger** |  | 104.22d | 2022-08-01 A | 2022-12-23 |  |  | 104.22d | 0d |  | start no earlier than 2022-08-01 |  |
| 15 | 1.3.1 | **CPMT-Phase #1** |  | 37d | 2022-08-01 A | 2022-09-20 |  |  | 37d | 0d |  | start no earlier than 2022-08-01 |  |
| 16 | 1.3.1.1 | Convert User Controls to Uppwise |  | 21.33d | 2022-08-01 | 2022-08-30 |  |  |  | 0d |  |  | 216h |
| 17 | 1.3.1.2 | Build 1st set of API hooks |  | 17.78d | 2022-08-08 A | 2022-08-31 | 16SS+5d |  | 17.78d | 2.22d |  | start no earlier than 2022-08-08 | 180h |
| 18 | 1.3.1.3 | Build dashboard dataTables |  | 10.67d | 2022-09-05 A | 2022-09-19 | 17 |  | 10.67d | 1.33d | 0d | start no earlier than 2022-09-05 | 108h |
| 19 | 1.3.1.4 | Apply 1st UI upgrade |  | 13.33d | 2022-08-31 A | 2022-09-19 | 18FF |  | 13.33d | -0.33d | 0d | start no earlier than 2022-08-31 | 135h |
| 20 | 1.3.1.5 | 1st MVP Ready | milestone | 0d | 2022-09-20 A | 2022-09-20 | 19 | 99% | 0d | 0d |  | start no earlier than 2022-09-20 |  |
| 21 | 1.3.2 | **CPMT-Phase #2** |  | 67.22d | 2022-09-21 A | 2022-12-23 |  |  | 67.22d | 0d |  | start no earlier than 2022-09-21 |  |
| 22 | 1.3.2.1 | Build Dashboards |  | 8.89d | 2022-09-21 A | 2022-10-03 | 20 |  | 8.89d | 58.33d |  | start no earlier than 2022-09-21 | 90h |
| 23 | 1.3.2.2 | Build final set of API hooks |  | 8.89d | 2022-09-21 A | 2022-10-03 | 18 |  | 8.89d | 1.11d |  | start no earlier than 2022-09-21 | 90h |
| 24 | 1.3.2.3 | Implement Action Center |  | 4.44d | 2022-10-19 A | 2022-10-25 | 23FS+10d |  | 4.44d | 0.56d |  | start no earlier than 2022-10-19 | 45h |
| 25 | 1.3.2.4 | Implement Synchronization Efforts (Users, Groups,COS) |  | 17.78d | 2022-10-26 A | 2022-11-18 | 24 |  | 17.78d | 2.22d |  | start no earlier than 2022-10-26 | 180h |
| 26 | 1.3.2.5 | Migration of existing projects to Uppwise?? |  | 22.22d | 2022-11-23 A | 2022-12-23 | 25 |  | 22.22d | 0d |  | start no earlier than 2022-11-23 | 225h |

| ID | WBS | Task | Duration | Start | Finish | Predecessors | Remaining | Total slack | Constraint | Work |
| --- | --- | --- | --- | --- | --- | --- | --- | --- | --- | --- |
| 27 | 1.4 | **SAP Integration** | 45.56d | 2022-08-08 A | 2022-10-10 |  | 45.56d | 53.67d | start no earlier than 2022-08-08 |  |
| 28 | 1.4.1 | Change SAP Connectivity | 8.89d | 2022-08-08 | 2022-08-18 |  |  | 1.11d |  | 90h |
| 29 | 1.4.2 | Testing & Adjustments | 35.56d | 2022-08-22 A | 2022-10-10 | 28 | 35.56d | 53.67d | start no earlier than 2022-08-22 | 360h |
| 30 | 1.5 | **Other Deliverables** | 17.78d | 2022-06-17 A | 2022-07-12 |  | 17.78d | 117.44d | start no earlier than 2022-06-01 |  |
| 31 | 1.5.1 | Dashboard improvements | 4.44d | 2022-06-30 A | 2022-07-06 | 2 | 4.44d | 121.78d | start no earlier than 2022-06-30 | 45h |
| 32 | 1.5.6 | Sharepoint and msTeams integration | 17.78d | 2022-06-17 A | 2022-07-12 | 6 | 17.78d | 117.44d | start no earlier than 2022-06-17 | 180h |
