# Draft plan for completion

Schedule from MS Project, 2022-08-24 to 2022-12-08.

## Calendars

- Standard: Mon-Fri 08:00-12:00, 13:00-17:00; Sat-Sun off.

## Resources

| Resource |
| --- |
| Analytics |
| Development |
| Blue Triton |
| UI/UX |
| Proejct Engineer |
| Project Engineer |
| ALL |

## Schedule

| ID | WBS | Task | Type | Duration | Start | Finish | Predecessors | Total slack | Free slack | Constraint | Resources | Work |
| --- | --- | --- | --- | --- | --- | --- | --- | --- | --- | --- | --- | --- |
| 1 | 1 | **Pre-migration Actions** |  | 77d | 2022-08-24 | 2022-12-08 |  | 0d |  |  |  | 1972h |
| 2 | 1.1 | Provide Cost Import |  | 8d | 2022-08-24 | 2022-09-02 |  | 69d |  |  | Development | 64h |
| 3 | 1.2 | Move Attachments from BIM360 (manual) |  | 15d | 2022-09-05 | 2022-09-23 |  | 54d |  | start no earlier than 2022-09-05 | Blue Triton | 120h |
| 4 | 1.3 | Cleanup of PU's and Assets and other Nestle references |  | 3d | 2022-08-24 | 2022-08-26 |  | 74d |  |  | Blue Triton | 24h |
| 5 | 1.4 | **MVP 1** |  | 21d | 2022-09-05 | 2022-10-03 |  | 7d |  |  |  | 528h |
| 6 | 1.4.1 | **Convert User Controls which move to Uppwise** |  | 15d | 2022-09-05 | 2022-09-23 |  | 24d |  |  |  | 296h |
| 7 | 1.4.1.1 | **Financial Indicators Uionly + database** |  | 5d | 2022-09-05 | 2022-09-09 |  | 24d | 0d |  |  | 40h |
| 8 | 1.4.1.1.1 | Ui/UX widgets change |  | 1d | 2022-09-05 | 2022-09-05 |  | 24d | 0d | start no earlier than 2022-09-05 | UI/UX | 8h |
| 9 | 1.4.1.1.2 | Move and modify logic to read from Uppwise |  | 4d | 2022-09-06 | 2022-09-09 | 8 | 24d |  |  | Development | 32h |
| 10 | 1.4.1.2 | **1-Pager action button UI only + database** |  | 2d | 2022-09-12 | 2022-09-13 | 7 | 24d | 0d |  | UI/UX | 40h |
| 11 | 1.4.1.2.1 | Ui/UX widgets change |  | 1d | 2022-09-12 | 2022-09-12 | 8 | 25d | 1d |  | UI/UX | 8h |
| 12 | 1.4.1.2.2 | Move and modify logic to read from Uppwise |  | 2d | 2022-09-12 | 2022-09-13 | 11FF | 24d |  |  | Development | 16h |
| 13 | 1.4.1.3 | **Montlhy Report controls** |  | 5d | 2022-09-14 | 2022-09-20 | 10 | 24d |  |  | Development | 104h |
| 14 | 1.4.1.3.1 | Ui/UX widgets change |  | 3d | 2022-09-14 | 2022-09-16 | 8 | 24d | 0d |  | UI/UX | 24h |
| 15 | 1.4.1.3.2 | Move and modify logic to read from Uppwise |  | 5d | 2022-09-14 | 2022-09-20 | 14FF | 57d |  |  | Development | 40h |
| 16 | 1.4.1.4 | **Safety Reporting** |  | 5d | 2022-09-15 | 2022-09-21 |  | 24d | 0d |  |  | 64h |
| 17 | 1.4.1.4.1 | Ui/UX widgets change |  | 3d | 2022-09-19 | 2022-09-21 | 14, 11 | 24d | 0d |  | UI/UX | 24h |
| 18 | 1.4.1.4.2 | Move and modify logic to read from Uppwise |  | 5d | 2022-09-15 | 2022-09-21 | 17FF | 24d | 2d |  | Development | 40h |
| 19 | 1.4.1.5 | **VSU+Chart UI/UX only** |  | 2d | 2022-09-22 | 2022-09-23 | 16 | 24d |  |  | UI/UX | 48h |
| 20 | 1.4.1.5.1 | Ui/UX widgets change |  | 2d | 2022-09-22 | 2022-09-23 | 14, 11 | 24d | 0d |  | UI/UX | 16h |
| 21 | 1.4.1.5.2 | Move and modify logic to read from Uppwise |  | 2d | 2022-09-22 | 2022-09-23 | 20FF | 24d | 0d |  | Development | 16h |
| 22 | 1.4.2 | **Preparing MVP 1** |  | 21d | 2022-09-05 | 2022-10-03 |  | 7d |  |  |  | 232h |
| 23 | 1.4.2.1 | Implement COS |  | 1d | 2022-09-05 | 2022-09-05 |  | 7d | 0d | start no earlier than 2022-09-05 | Project Engineer | 8h |
| 24 | 1.4.2.2 | Setup Roles |  | 2d | 2022-09-06 | 2022-09-07 | 23 | 7d | 0d |  | Project Engineer | 16h |
| 25 | 1.4.2.3 | Complete configuration of project processes |  | 5d | 2022-09-08 | 2022-09-14 | 24 | 7d | 0d |  | Project Engineer | 40h |
| 26 | 1.4.2.4 | Complete configuration of collaboration processes |  | 5d | 2022-09-08 | 2022-09-14 | 24 | 61d |  |  | Project Engineer | 40h |
| 27 | 1.4.2.5 | Setup Basic Cost to comply with Level 1 of Advanced Cost |  | 1d | 2022-09-06 | 2022-09-06 | 23 | 57d | 0d |  | Project Engineer | 8h |
| 28 | 1.4.2.6 | Setup Resource Management |  | 1d | 2022-09-07 | 2022-09-07 | 27 | 57d | 0d |  | Project Engineer | 8h |
| 29 | 1.4.2.7 | Setup Portoflio and Program Management |  | 1d | 2022-09-08 | 2022-09-08 | 28 | 57d | 8d |  | Project Engineer | 8h |
| 30 | 1.4.2.8 | Initial MVP Testing & Adjustment with BT |  | 8d | 2022-09-21 | 2022-10-03 | 29, 34SF | 49d |  |  | Project Engineer | 64h |
| 31 | 1.4.2.9 | Re-build existing dashboards into Uppwise |  | 5d | 2022-09-15 | 2022-09-21 | 25 | 7d |  |  | Project Engineer | 40h |
| 32 | 1.4.2.10 | Additional Review Uppwise Ready | milestone | 0d | 2022-10-03 | 2022-10-03 |  | -1d | 0d | start no earlier than 2022-10-03 |  |  |
| 33 | 1.4.2.11 | Complete Additional Review setup |  | 1d | 2022-10-03 | 2022-10-03 | 32 | -1d | 0d |  |  |  |
| 34 | 1.4.2.12 | 1st MVP Ready | milestone | 0d | 2022-10-03 | 2022-10-03 | 31, 33 | -1d | 0d | must start on 2022-10-03 |  |  |

Notes:
- 3: to be doine by BT
- 4: BT to provide input
- 5: we only focus on Uppwise and non-cost functionality / cost integration is MVP #2
- 7: no input needed from BT / info share from POX team to Ui/UX
- 13: no input needed from BT
- 16: no input needed from BT / but we are awaiting acceptance of current functionality
- 24: tranaslation of current roles into new security model in Uppwise. / 1st action Irina/us to do a suggestion / then it needs to be confirmed with BT.

| ID | WBS | Task | Type | Duration | Start | Finish | Predecessors | Total slack | Free slack | Constraint | Resources | Work |
| --- | --- | --- | --- | --- | --- | --- | --- | --- | --- | --- | --- | --- |
| 35 | 1.5 | **MVP 2** |  | 72d | 2022-08-31 | 2022-12-08 |  | 0d |  |  |  | 1236h |
| 36 | 1.5.1 | **General** |  | 36d | 2022-08-31 | 2022-10-19 |  | 36d |  |  |  | 240h |
| 37 | 1.5.1.1 | Modify CPMT user interface (reskin) |  | 8d | 2022-08-31 | 2022-09-09 |  | 58d | 10d | finish no earlier than 2022-09-09 | UI/UX | 64h |
| 38 | 1.5.1.2 | Remove unwanted functionality from CPMT |  | 4d | 2022-09-26 | 2022-09-29 | 18, 21 | 50d |  |  | Development | 32h |
| 39 | 1.5.1.3 | Authentication Integration Uppwise |  | 10d | 2022-09-26 | 2022-10-07 | 18, 21 | 24d | 0d |  | Development | 80h |
| 40 | 1.5.1.4 | Make cost widgets available in uppwise (iframe) |  | 8d | 2022-10-10 | 2022-10-19 | 39 | 24d | 0d |  | Development | 64h |
| 41 | 1.5.2 | **API** |  | 15d | 2022-09-12 | 2022-09-30 |  | 15d |  |  | Analytics | 240h |
| 42 | 1.5.2.1 | Define API structure |  | 3d | 2022-09-12 | 2022-09-14 |  | 15d | 0d | start no earlier than 2022-09-12 | Analytics | 24h |
| 43 | 1.5.2.2 | API's for budget management |  | 2d | 2022-09-15 | 2022-09-16 | 42 | 15d | 0d | start no earlier than 2022-09-05 | Analytics | 16h |
| 44 | 1.5.2.3 | API's for change management |  | 4d | 2022-09-19 | 2022-09-22 | 43 | 15d | 0d |  | Analytics | 32h |
| 45 | 1.5.2.4 | API's cost management changes |  | 3d | 2022-09-23 | 2022-09-27 | 44 | 37d | 0d |  | Analytics | 24h |
| 46 | 1.5.2.5 | API's project level changes (create, status …) |  | 3d | 2022-09-28 | 2022-09-30 | 45 | 37d | 13d |  | Analytics | 24h |
| 47 | 1.5.3 | **Change Management Control** |  | 8d | 2022-09-23 | 2022-10-04 |  | 15d |  |  |  | 80h |
| 48 | 1.5.3.1 | Ui/UX widgets change |  | 2d | 2022-09-26 | 2022-09-27 | 37, 17, 20 | 48d | 0d |  | UI/UX | 16h |
| 49 | 1.5.3.2 | Move and modify logic to read from Uppwise |  | 8d | 2022-09-23 | 2022-10-04 | 44 | 15d | 0d |  | Development | 64h |
| 50 | 1.5.4 | **Project Review** |  | 9d | 2022-09-28 | 2022-10-10 |  | 20d |  |  |  | 48h |
| 51 | 1.5.4.1 | Ui/UX widgets change |  | 2d | 2022-09-28 | 2022-09-29 | 48 | 50d |  |  | UI/UX | 16h |
| 52 | 1.5.4.2 | Move and modify logic to read from Uppwise |  | 4d | 2022-10-05 | 2022-10-10 | 49 | 15d | 7d |  | Development | 32h |
| 53 | 1.5.5 | **Uppwise Specifics** |  | 22d | 2022-10-31 | 2022-11-30 |  | 7d |  |  |  |  |
| 54 | 1.5.5.1 | Multi-Currency available in Uppwise | milestone | 0d | 2022-10-31 | 2022-10-31 |  | 29d |  | start no earlier than 2022-10-31 |  |  |
| 55 | 1.5.5.2 | Sharepoint integration implemented for file sharing | milestone | 0d | 2022-10-31 | 2022-10-31 |  | 29d |  | start no earlier than 2022-10-31 |  |  |
| 56 | 1.5.5.3 | Sharepoint interface in Uppwise (optional) | milestone | 0d | 2022-11-30 | 2022-11-30 |  | 7d |  | start no earlier than 2022-11-30 |  |  |
| 57 | 1.5.6 | **Preparing MVP 2** |  | 20d | 2022-10-10 | 2022-11-04 |  | 24d |  |  |  | 160h |
| 58 | 1.5.6.1 | **MVP Activities** |  | 20d | 2022-10-10 | 2022-11-04 |  | 24d |  |  |  | 160h |
| 59 | 1.5.6.1.1 | Provide dataSource for cost elements L3/L4/L5 |  | 3d | 2022-10-10 | 2022-10-12 | 39 | 41d |  |  | Analytics | 24h |
| 60 | 1.5.6.1.2 | Acceptance Testing of cost integration |  | 8d | 2022-10-20 | 2022-10-31 | 43, 45, 46, 40 | 24d | 0d |  | Project Engineer | 64h |
| 61 | 1.5.6.1.3 | Acceptance Testing of change and budget management |  | 4d | 2022-11-01 | 2022-11-04 | 44, 47, 60 | 24d |  |  | Project Engineer | 32h |
| 62 | 1.5.6.1.4 | Acceptance testing of projects and general features |  | 5d | 2022-10-20 | 2022-10-26 | 60SS | 31d |  |  | Proejct Engineer | 40h |

Notes:
- 38: hiding of menus / user preferences / etc...
- 41: Challenge is that Vishant is leaving. / Jeoren to investigate with Ravi, who will replace and how we can avoid additional strain on the POX team
- 54: check if in Uppwise basic cost we can fulfill with only USd and keep MC only in Advanced Cost. / if so, then API must convert
- 59: also includes publishing schema modifications

| ID | WBS | Task | Type | Duration | Start | Finish | Predecessors | Total slack | Free slack | Constraint | Resources | Work |
| --- | --- | --- | --- | --- | --- | --- | --- | --- | --- | --- | --- | --- |
| 63 | 1.5.7 | **Migration** |  | 36d | 2022-10-03 | 2022-11-21 |  | 8d |  |  |  | 284h |
| 64 | 1.5.7.1 | Prepare Migration Scripts |  | 15d | 2022-10-03 | 2022-10-21 | 52FF+2d, 34 | 8d | 0d |  | Development | 120h |
| 65 | 1.5.7.2 | Test migration Scripts |  | 5d | 2022-10-24 | 2022-10-28 | 64 | 8d |  |  | ALL | 40h |
| 66 | 1.5.7.3 | Migrate projects from CPMT to Uppwise (uUC data, project data, schedule, etc..) |  | 3ed | 2022-11-10 | 2022-11-13 | 65 | 0d |  | must start on 2022-11-10 | ALL | 72h |
| 67 | 1.5.7.4 | Complete User Setup |  | 4eh | 2022-11-13 | 2022-11-13 | 66 | 2.5d | 0d |  | Project Engineer | 4h |
| 68 | 1.5.7.5 | Go-Live | milestone | 0d | 2022-11-13 | 2022-11-13 | 67 | 13d | 0d |  |  |  |
| 69 | 1.5.7.6 | Complete Dashboards & Reports |  | 5d | 2022-11-14 | 2022-11-18 | 68 | 13d | 0d |  | Project Engineer | 40h |
| 70 | 1.5.7.7 | Verify dashboard data for correctness |  | 1d | 2022-11-21 | 2022-11-21 | 69 | 13d |  |  | Project Engineer | 8h |
| 71 | 1.5.8 | **SAP** |  | 64d | 2022-09-12 | 2022-12-08 |  | 0d |  |  |  | 184h |
| 72 | 1.5.8.1 | Receive SAP specification from BT | milestone | 0d | 2022-09-12 | 2022-09-12 |  | 41d | 0d | start no earlier than 2022-09-12 |  |  |
| 73 | 1.5.8.2 | Analyze |  | 4d | 2022-09-12 | 2022-09-15 | 72 | 41d | 0d |  | Blue Triton | 32h |
| 74 | 1.5.8.3 | Agree on approach | milestone | 0d | 2022-09-15 | 2022-09-15 | 73 | 41d |  |  | Development |  |
| 75 | 1.5.8.4 | Build |  | 12d | 2022-11-14 | 2022-11-29 | 74, 67 | 0d |  |  | Development | 96h |
| 76 | 1.5.8.5 | Test |  | 5d | 2022-11-30 | 2022-12-06 | 75 | 0d |  |  | Blue Triton | 40h |
| 77 | 1.5.8.6 | Deliver |  | 2d | 2022-12-07 | 2022-12-08 | 76 | 0d |  |  | Development | 16h |
