Schedule from MS Project, 2022-08-31 to 2022-12-08.

## Calendars

- Standard: Mon-Fri 08:00-12:00, 13:00-17:00; Sat-Sun off.

## Resources

| Resource |
| --- |
| Development |
| Blue Triton |
| UI/UX |
| Project Engineer |
| Analytics |
| Proejct Engineer |
| ALL |

## Schedule

| ID | WBS | Task | Type | Duration | Start | Finish | Predecessors | Total slack | Free slack | Constraint | Resources | Work |
| --- | --- | --- | --- | --- | --- | --- | --- | --- | --- | --- | --- | --- |
| 1 | 1 | Provide Cost Import |  | 8d | 2022-09-26 | 2022-10-05 |  | 46d |  |  | Development | 64h |
| 2 | 2 | Move Attachments from BIM360 manual |  | 15d | 2022-09-05 | 2022-09-23 |  | 54d |  | start no earlier than 2022-09-05 | Blue Triton | 120h |
| 3 | 3 | Cleanup of PU's and Assets and other Nestle references |  | 3d | 2022-09-26 | 2022-09-28 |  | 51d |  |  | Blue Triton | 24h |
| 4 | 4 | **MVP 1** |  | 22d | 2022-09-05 | 2022-10-04 |  | 7d |  |  |  | 528h |
| 5 | 4.1 | **Convert User Controls which move to Uppwise** |  | 22d | 2022-09-05 | 2022-10-04 |  | 24d |  |  |  | 296h |
| 6 | 4.1.1 | **Financial Indicators Uionly and database** |  | 5d | 2022-09-05 | 2022-09-09 |  | 24d | 0d |  |  | 40h |
| 7 | 4.1.1.1 | UiUX widgets change |  | 1d | 2022-09-05 | 2022-09-05 |  | 24d | 0d | start no earlier than 2022-09-05 | UI/UX | 8h |
| 8 | 4.1.1.2 | Move and modify logic to read from Uppwise |  | 4d | 2022-09-06 | 2022-09-09 | 7 | 24d |  |  | Development | 32h |
| 9 | 4.1.2 | **1-Pager action button UI only and database** |  | 2d | 2022-09-12 | 2022-09-13 | 6 | 24d | 0d |  | UI/UX | 40h |
| 10 | 4.1.2.1 | UiUX widgets change |  | 1d | 2022-09-12 | 2022-09-12 | 7 | 25d | 1d |  | UI/UX | 8h |
| 11 | 4.1.2.2 | Move and modify logic to read from Uppwise |  | 2d | 2022-09-12 | 2022-09-13 | 10FF | 24d |  |  | Development | 16h |
| 12 | 4.1.3 | **Montlhy Report controls** |  | 5d | 2022-09-14 | 2022-09-20 | 9 | 24d |  |  | Development | 104h |
| 13 | 4.1.3.1 | UiUX widgets change |  | 3d | 2022-09-14 | 2022-09-16 | 7 | 24d | 0d |  | UI/UX | 24h |
| 14 | 4.1.3.2 | Move and modify logic to read from Uppwise |  | 5d | 2022-09-14 | 2022-09-20 | 13FF | 57d |  |  | Development | 40h |
| 15 | 4.1.4 | **Safety Reporting** |  | 10d | 2022-09-19 | 2022-09-30 |  | 17d | 0d |  |  | 64h |
| 16 | 4.1.4.1 | UiUX widgets change |  | 3d | 2022-09-19 | 2022-09-21 | 10, 13 | 24d | 7d |  | UI/UX | 24h |
| 17 | 4.1.4.2 | Move and modify logic to read from Uppwise |  | 5d | 2022-09-26 | 2022-09-30 | 16FF | 17d | 2d |  | Development | 40h |
| 18 | 4.1.5 | **VSUandChart UIUX only** |  | 2d | 2022-10-03 | 2022-10-04 | 15 | 17d |  |  | UI/UX | 48h |
| 19 | 4.1.5.1 | UiUX widgets change |  | 2d | 2022-10-03 | 2022-10-04 | 10, 13 | 17d | 0d |  | UI/UX | 16h |
| 20 | 4.1.5.2 | Move and modify logic to read from Uppwise |  | 2d | 2022-10-03 | 2022-10-04 | 19FF | 17d | 0d |  | Development | 16h |
| 21 | 4.2 | **Preparing MVP 1** |  | 21d | 2022-09-05 | 2022-10-03 |  | 7d |  |  |  | 232h |
| 22 | 4.2.1 | Implement COS |  | 1d | 2022-09-05 | 2022-09-05 |  | 7d | 0d | start no earlier than 2022-09-05 | Project Engineer | 8h |
| 23 | 4.2.2 | Setup Roles |  | 2d | 2022-09-06 | 2022-09-07 | 22 | 7d | 0d |  | Project Engineer | 16h |
| 24 | 4.2.3 | Complete configuration of project processes |  | 5d | 2022-09-08 | 2022-09-14 | 23 | 7d | 0d |  | Project Engineer | 40h |
| 25 | 4.2.4 | Complete configuration of collaboration processes |  | 5d | 2022-09-08 | 2022-09-14 | 23 | 61d |  |  | Project Engineer | 40h |
| 26 | 4.2.5 | Setup Basic Cost to comply with Level 1 of Advanced Cost |  | 1d | 2022-09-06 | 2022-09-06 | 22 | 57d | 0d |  | Project Engineer | 8h |
| 27 | 4.2.6 | Setup Resource Management |  | 1d | 2022-09-07 | 2022-09-07 | 26 | 57d | 0d |  | Project Engineer | 8h |
| 28 | 4.2.7 | Setup Portoflio and Program Management |  | 1d | 2022-09-08 | 2022-09-08 | 27 | 57d | 8d |  | Project Engineer | 8h |
| 29 | 4.2.8 | Initial MVP Testing and Adjustment with BT |  | 8d | 2022-09-21 | 2022-10-03 | 28, 33SF | 49d |  |  | Project Engineer | 64h |
| 30 | 4.2.9 | Re-build existing dashboards into Uppwise |  | 5d | 2022-09-15 | 2022-09-21 | 24 | 7d |  |  | Project Engineer | 40h |
| 31 | 4.2.10 | Additional Review Uppwise Ready | milestone | 0d | 2022-10-03 | 2022-10-03 |  | -1d | 0d | start no earlier than 2022-10-03 |  |  |
| 32 | 4.2.11 | Complete Additional Review setup |  | 1d | 2022-10-03 | 2022-10-03 | 31 | -1d | 0d |  |  |  |
| 33 | 4.2.12 | 1st MVP Ready | milestone | 0d | 2022-10-03 | 2022-10-03 | 30, 32 | -1d | 0d | must start on 2022-10-03 |  |  |

Notes:
- 2: to be doine by BT
- 3: BT to provide input
- 4: we only focus on Uppwise and non-cost functionality / cost integration is MVP #2
- 6: no input needed from BT / info share from POX team to Ui/UX
- 12: no input needed from BT
- 15: no input needed from BT / but we are awaiting acceptance of current functionality
- 23: tranaslation of current roles into new security model in Uppwise. / 1st action Irina/us to do a suggestion / then it needs to be confirmed with BT.

| ID | WBS | Task | Type | Duration | Start | Finish | Predecessors | Total slack | Free slack | Constraint | Resources | Work |
| --- | --- | --- | --- | --- | --- | --- | --- | --- | --- | --- | --- | --- |
| 34 | 5 | **MVP 2** |  | 72d | 2022-08-31 | 2022-12-08 |  | 0d |  |  |  | 1236h |
| 35 | 5.1 | **General** |  | 43d | 2022-08-31 | 2022-10-28 |  | 29d |  |  |  | 240h |
| 36 | 5.1.1 | Modify CPMT user interface reskin |  | 8d | 2022-08-31 | 2022-09-09 |  | 58d | 17d | finish no earlier than 2022-09-09 | UI/UX | 64h |
| 37 | 5.1.2 | Remove unwanted functionality from CPMT |  | 4d | 2022-10-05 | 2022-10-10 | 17, 20 | 43d |  |  | Development | 32h |
| 38 | 5.1.3 | Authentication Integration Uppwise |  | 10d | 2022-10-05 | 2022-10-18 | 17, 20 | 17d | 0d |  | Development | 80h |
| 39 | 5.1.4 | Make cost widgets available in uppwise iframe |  | 8d | 2022-10-19 | 2022-10-28 | 38 | 17d | 0d |  | Development | 64h |
| 40 | 5.2 | **API** |  | 15d | 2022-09-12 | 2022-09-30 |  | 15d |  |  | Analytics | 240h |
| 41 | 5.2.1 | Define API structure |  | 3d | 2022-09-12 | 2022-09-14 |  | 15d | 0d | start no earlier than 2022-09-12 | Analytics | 24h |
| 42 | 5.2.2 | API's for budget management |  | 2d | 2022-09-15 | 2022-09-16 | 41 | 15d | 0d | start no earlier than 2022-09-05 | Analytics | 16h |
| 43 | 5.2.3 | API's for change management |  | 4d | 2022-09-19 | 2022-09-22 | 42 | 15d | 0d |  | Analytics | 32h |
| 44 | 5.2.4 | API's cost management changes |  | 3d | 2022-09-23 | 2022-09-27 | 43 | 37d | 0d |  | Analytics | 24h |
| 45 | 5.2.5 | API's project level changes create, status … |  | 3d | 2022-09-28 | 2022-09-30 | 44 | 37d | 20d |  | Analytics | 24h |
| 46 | 5.3 | **Change Management Control** |  | 10d | 2022-09-23 | 2022-10-06 |  | 15d |  |  |  | 80h |
| 47 | 5.3.1 | UiUX widgets change |  | 2d | 2022-10-05 | 2022-10-06 | 16, 19, 36 | 41d | 0d |  | UI/UX | 16h |
| 48 | 5.3.2 | Move and modify logic to read from Uppwise |  | 8d | 2022-09-23 | 2022-10-04 | 43 | 15d | 0d |  | Development | 64h |
| 49 | 5.4 | **Project Review** |  | 4d | 2022-10-05 | 2022-10-10 |  | 15d |  |  |  | 48h |
| 50 | 5.4.1 | UiUX widgets change |  | 2d | 2022-10-07 | 2022-10-10 | 47 | 43d |  |  | UI/UX | 16h |
| 51 | 5.4.2 | Move and modify logic to read from Uppwise |  | 4d | 2022-10-05 | 2022-10-10 | 48 | 15d | 7d |  | Development | 32h |
| 52 | 5.5 | **Uppwise Specifics** |  | 22d | 2022-10-31 | 2022-11-30 |  | 7d |  |  |  |  |
| 53 | 5.5.1 | Multi-Currency available in Uppwise | milestone | 0d | 2022-10-31 | 2022-10-31 |  | 29d |  | start no earlier than 2022-10-31 |  |  |
| 54 | 5.5.2 | Sharepoint integration implemented for file sharing | milestone | 0d | 2022-10-31 | 2022-10-31 |  | 29d |  | start no earlier than 2022-10-31 |  |  |
| 55 | 5.5.3 | Sharepoint interface in Uppwise optional | milestone | 0d | 2022-11-30 | 2022-11-30 |  | 7d |  | start no earlier than 2022-11-30 |  |  |
| 56 | 5.6 | **Preparing MVP 2** |  | 20d | 2022-10-19 | 2022-11-15 |  | 17d |  |  |  | 160h |
| 57 | 5.6.1 | **MVP Activities** |  | 20d | 2022-10-19 | 2022-11-15 |  | 17d |  |  |  | 160h |
| 58 | 5.6.1.1 | Provide dataSource for cost elements L3L4L5 |  | 3d | 2022-10-19 | 2022-10-21 | 38 | 34d |  |  | Analytics | 24h |
| 59 | 5.6.1.2 | Acceptance Testing of cost integration |  | 8d | 2022-10-31 | 2022-11-09 | 39, 42, 44, 45 | 17d | 0d |  | Project Engineer | 64h |
| 60 | 5.6.1.3 | Acceptance Testing of change and budget management |  | 4d | 2022-11-10 | 2022-11-15 | 43, 46, 59 | 17d |  |  | Project Engineer | 32h |
| 61 | 5.6.1.4 | Acceptance testing of projects and general features |  | 5d | 2022-10-31 | 2022-11-04 | 59SS | 24d |  |  | Proejct Engineer | 40h |

Notes:
- 37: hiding of menus / user preferences / etc...
- 40: Challenge is that Vishant is leaving. / Jeoren to investigate with Ravi, who will replace and how we can avoid additional strain on the POX team
- 53: check if in Uppwise basic cost we can fulfill with only USd and keep MC only in Advanced Cost. / if so, then API must convert
- 58: also includes publishing schema modifications

| ID | WBS | Task | Type | Duration | Start | Finish | Predecessors | Total slack | Free slack | Constraint | Resources | Work |
| --- | --- | --- | --- | --- | --- | --- | --- | --- | --- | --- | --- | --- |
| 62 | 5.7 | **Migration** |  | 36d | 2022-10-03 | 2022-11-21 |  | 8d |  |  |  | 284h |
| 63 | 5.7.1 | Prepare Migration Scripts |  | 15d | 2022-10-03 | 2022-10-21 | 33, 51FF+2d | 8d | 0d |  | Development | 120h |
| 64 | 5.7.2 | Test migration Scripts |  | 5d | 2022-10-24 | 2022-10-28 | 63 | 8d |  |  | ALL | 40h |
| 65 | 5.7.3 | Migrate projects from CPMT to Uppwise uUC data, project data, schedule, etc.. |  | 3ed | 2022-11-10 | 2022-11-13 | 64 | 0d |  | must start on 2022-11-10 | ALL | 72h |
| 66 | 5.7.4 | Complete User Setup |  | 4eh | 2022-11-13 | 2022-11-13 | 65 | 2.5d | 0d |  | Project Engineer | 4h |
| 67 | 5.7.5 | Go-Live | milestone | 0d | 2022-11-13 | 2022-11-13 | 66 | 13d | 0d |  |  |  |
| 68 | 5.7.6 | Complete Dashboards and Reports |  | 5d | 2022-11-14 | 2022-11-18 | 67 | 13d | 0d |  | Project Engineer | 40h |
| 69 | 5.7.7 | Verify dashboard data for correctness |  | 1d | 2022-11-21 | 2022-11-21 | 68 | 13d |  |  | Project Engineer | 8h |
| 70 | 5.8 | **SAP** |  | 64d | 2022-09-12 | 2022-12-08 |  | 0d |  |  |  | 184h |
| 71 | 5.8.1 | Receive SAP specification from BT | milestone | 0d | 2022-09-12 | 2022-09-12 |  | 41d | 0d | start no earlier than 2022-09-12 |  |  |
| 72 | 5.8.2 | Analyze |  | 4d | 2022-09-12 | 2022-09-15 | 71 | 41d | 0d |  | Blue Triton | 32h |
| 73 | 5.8.3 | Agree on approach | milestone | 0d | 2022-09-15 | 2022-09-15 | 72 | 41d |  |  | Development |  |
| 74 | 5.8.4 | Build |  | 12d | 2022-11-14 | 2022-11-29 | 66, 73 | 0d |  |  | Development | 96h |
| 75 | 5.8.5 | Test |  | 5d | 2022-11-30 | 2022-12-06 | 74 | 0d |  |  | Blue Triton | 40h |
| 76 | 5.8.6 | Deliver |  | 2d | 2022-12-07 | 2022-12-08 | 75 | 0d |  |  | Development | 16h |
